# Planning

How a schedule from MS Project changed from version to version. A marks actual dates.

## Version 1 (saved 2017-02-17, file Planning_week1.mpp)

Note of the change: sd gewijzigd, technishe ontwerp, testverslag, back-up procudure en revisie bijgewerkt

| ID | WBS | Task | Duration | Start | Finish | Predecessors | Complete | Total float | Constraint |
| --- | --- | --- | --- | --- | --- | --- | --- | --- | --- |
| 1 | 1 | **Inception Phase** | 1.83d | 2017-02-13 08:00 A | 2017-02-17 17:00 |  | 98% | 2.38d |  |
| 2 |  | Interview voorbereiden | 480min | 2017-02-13 08:00 A | 2017-02-13 17:00 A |  | 100% |  | finish no earlier than 2017-02-13 17:00 |
| 3 |  | Hernieuwde opdracht | 930min | 2017-02-13 08:30 A | 2017-02-15 10:50 A | 2 | 100% |  | finish no earlier than 2017-02-14 17:00 |
| 4 |  | Offerte | 50min | 2017-02-15 08:00 A | 2017-02-15 08:50 A | 3 | 100% |  |  |
| 5 |  | Prototype van shermen gebaseerd op interview | 30min | 2017-02-16 08:00 A | 2017-02-16 08:30 A | 4 | 100% |  |  |
| 6 |  | Plan van aanpak | 930min | 2017-02-16 08:30 A | 2017-02-17 17:00 A | 5 | 100% |  | finish no earlier than 2017-02-17 17:00 |
| 7 |  | Globale planning voor het gehele project in een planningstool (bijvoorbeeld in MS-Project) | 30min | 2017-02-13 08:00 A | 2017-02-13 08:30 A | 6 | 100% |  |  |
| 8 |  | Functioneel ontwerp inclusief taakverdeeling | 20min | 2017-02-13 08:20 A | 2017-02-13 08:40 A | 7 | 100% |  |  |
| 9 | 1.8 | **Use-case diagram** | 0.04d | 2017-02-16 08:00 A | 2017-02-16 08:40 A | 8 | 100% |  |  |
| 10 |  | Selecteer actoren en use-cases en plaats een titel boven het te maken diagram | 20min | 2017-02-16 08:00 A | 2017-02-16 08:40 A |  | 100% |  |  |
| 11 |  | Bepaal per use-case welke actor(en) verantwoordelijk zijn | 10min | 2017-02-16 08:00 A | 2017-02-16 08:30 A |  | 100% |  |  |
| 12 | 1.9 | **Use-case templates** | 0.06d | 2017-02-16 08:00 A | 2017-02-16 08:50 A | 9 | 100% |  |  |
| 13 |  | Selecteer actoren en plaats een titel boven het te maken template | 10min | 2017-02-16 08:00 A | 2017-02-16 08:30 A |  | 100% |  |  |
| 14 |  | Use-case templates maken doormiddel van de use-case diagrammen | 30min | 2017-02-16 08:00 A | 2017-02-16 08:50 A |  | 100% |  |  |
| 15 | 1.10 | **Activiteitendiagrammen** | 0.04d | 2017-02-17 08:20 | 2017-02-17 08:40 | 12 |  | 2.79d |  |
| 16 |  | Selecteer operaties en/of use-cases en plaats een titel boven het te maken diagram | 20min | 2017-02-17 08:20 | 2017-02-17 08:40 |  |  | 2.79d | start no earlier than 2017-02-17 08:00 |
| 17 |  | Vind de activiteiten en de bijbehorende flow of control | 20min | 2017-02-17 08:20 | 2017-02-17 08:40 |  |  | 2.79d | start no earlier than 2017-02-17 08:20 |
| 18 |  | Bepaal per activiteit welk object verantwoordelijk is | 10min | 2017-02-17 08:20 | 2017-02-17 08:30 |  |  | 2.81d | start no earlier than 2017-02-17 08:20 |
| 19 |  | End Inception Phase | 0d | 2017-02-24 08:00 | 2017-02-24 08:00 |  |  | 0d | start no earlier than 2017-02-24 08:00 |
| 20 | 3 | **Elaboration Phase** | 1d? | 2017-02-24 08:20 | 2017-02-28 09:00 | 19 |  | 0d |  |
| 21 |  | Technisch Ontwerp inclusief taakverdeling | 10min | 2017-02-24 08:20 | 2017-02-24 08:30 |  |  | 0.98d |  |
| 22 |  | Modeldictionary | 15min | 2017-02-24 08:20 | 2017-02-24 08:35 |  |  | 0.97d |  |
| 23 |  | Klassendiagram | 15min | 2017-02-24 08:20 | 2017-02-24 08:35 |  |  | 0.97d |  |
| 24 |  | Ontwerp datadictionary | 15min | 2017-02-24 08:20 | 2017-02-24 08:35 |  |  | 0.97d |  |
| 25 |  | Sequentiediagrammen | 20min | 2017-02-24 08:20 | 2017-02-24 08:40 |  |  | 0.96d |  |
| 26 |  | Overzicht taakverdeling Inrichten van de ontwikkelomgeving | 10min | 2017-02-24 08:20 | 2017-02-24 08:30 |  |  | 0.98d |  |
| 27 |  | Materialenlijst: Hard- en software van de ontwikkelomgeving | 10min | 2017-02-24 08:20 | 2017-02-24 08:30 |  |  | 0.98d |  |
| 28 |  | Back-up procedure | 1d? | 2017-02-24 08:20 | 2017-02-28 09:00 |  |  | 0d |  |
| 29 |  | Verslag over de installatie, configuratie en testen van de testomgeving | 1d? | 2017-02-24 08:20 | 2017-02-28 09:00 |  |  | 0d |  |
| 30 |  | End Elaboration Phase | 0d | 2017-02-13 08:00 | 2017-02-13 08:00 |  |  | 4.21d |  |
| 31 | 5 | **Construction Phase** | 1d? | 2017-02-13 08:20 | 2017-02-16 09:00 |  |  | 3.21d |  |
| 32 |  | Organisatieonderzoek over reeds gebruikte databases/te gebruiken database | 1d? | 2017-02-13 08:20 | 2017-02-16 09:00 |  |  | 3.21d |  |
| 33 |  | Genormaliseerd databaseontwerp | 20min | 2017-02-13 08:20 | 2017-02-13 08:40 |  |  | 4.17d |  |
| 34 |  | Definitieve datadictionary | 20min | 2017-02-13 08:20 | 2017-02-13 08:40 |  |  | 4.17d |  |
| 35 |  | De database (gebouwd) | 10min | 2017-02-13 08:20 | 2017-02-13 08:30 |  |  | 4.19d |  |
| 36 | 5.5 | **Werkende solution/webapplicatie (v1.0.0). Alle functionaliteit is gerealiseerd.** | 1d? | 2017-02-13 08:20 | 2017-02-16 09:00 |  |  | 3.21d |  |
| 37 |  | Registratiesysteem | 1d? | 2017-02-13 08:20 | 2017-02-16 09:00 |  |  | 3.21d |  |
| 38 |  | Inlogsysteem | 1d? | 2017-02-13 08:20 | 2017-02-16 09:00 |  |  | 3.21d |  |
| 39 |  | Create taak | 1d? | 2017-02-13 08:20 | 2017-02-16 09:00 |  |  | 3.21d |  |
| 40 |  | Read taak | 1d? | 2017-02-13 08:20 | 2017-02-16 09:00 |  |  | 3.21d |  |
| 41 |  | Update taak | 1d? | 2017-02-13 08:20 | 2017-02-16 09:00 |  |  | 3.21d |  |
| 42 |  | Delete taak | 1d? | 2017-02-13 08:20 | 2017-02-16 09:00 |  |  | 3.21d |  |
| 43 |  | Dataset (Lijsten van ingevoerde en dus geteste data) | 10min | 2017-02-13 08:20 | 2017-02-13 08:30 |  |  | 4.19d |  |
| 44 |  | Technische test is gemaakt. | 1d | 2017-02-13 08:20 | 2017-02-16 09:00 |  |  | 3.21d |  |
| 45 |  | Technische test is uitgevoerd | 1d | 2017-02-13 08:20 | 2017-02-16 09:00 |  |  | 3.21d |  |
| 46 |  | Functionele test is gemaakt. | 1d | 2017-02-13 08:20 | 2017-02-16 09:00 |  |  | 3.21d |  |
| 47 |  | Functionele test is uitgevoerd. | 1d | 2017-02-13 08:20 | 2017-02-16 09:00 |  |  | 3.21d |  |
| 48 |  | End Construction Phase | 0d | 2017-02-13 08:00 | 2017-02-13 08:00 |  |  | 4.21d |  |
| 49 | 7 | **Transition Phase** | 1d | 2017-02-13 08:20 | 2017-02-16 09:00 |  |  | 3.21d |  |
| 50 |  | Acceptatietest is uitgevoerd bij (gebruiker van) de opdrachtgever. | 1d | 2017-02-13 08:20 | 2017-02-16 09:00 |  |  | 3.21d |  |
| 51 |  | Gebruikershandleiding | 1d | 2017-02-13 08:20 | 2017-02-16 09:00 |  |  | 3.21d |  |
| 52 |  | Projectrapport | 1d | 2017-02-13 08:20 | 2017-02-16 09:00 |  |  | 3.21d |  |
| 53 |  | Teamrapport (= individuele reflectie) | 1d | 2017-02-13 08:20 | 2017-02-16 09:00 |  |  | 3.21d |  |
| 54 |  | Presentatie | 1d | 2017-02-13 08:20 | 2017-02-16 09:00 |  |  | 3.21d |  |
| 55 |  | Logboek Tijdregistratie | 1d | 2017-02-13 08:20 | 2017-02-16 09:00 |  |  | 3.21d |  |
| 56 |  | End Transition Phase | 1d? | 2017-02-13 08:20 | 2017-02-16 09:00 |  |  | 3.21d |  |

## Version 2 (saved 2017-02-22, file Planning_week2.mpp)

Note of the change: sd gewijzigd, technishe ontwerp, testverslag, back-up procudure en revisie bijgewerkt

Last finish 2017-02-28 → 2017-04-14 (+45d). Complete tasks 11 → 27.

Added:

| ID | Task | Duration | Start | Finish | Predecessors | Resources |
| --- | --- | --- | --- | --- | --- | --- |
| 6 | Prototype toelichting volgordelijkheid | 20min | 2017-02-16 08:30 A | 2017-02-16 08:50 A | 5 | Patrick van Batenburg |
| 28 | **Inrichten van de ontwikkelomgeving** | 0.01d | 2017-02-20 08:00 A | 2017-02-20 08:25 A | 27 |  |
| 29 | Visual studio | 5min | 2017-02-20 08:00 A | 2017-02-20 08:25 A | 27 | Patrick van Batenburg |
| 30 | visual studio | 5min | 2017-02-20 08:00 A | 2017-02-20 08:25 A | 27 | Steven Logghe |

Changed:

| ID | Task | Start | Finish | Duration | Complete | Total float | Predecessors | Other |
| --- | --- | --- | --- | --- | --- | --- | --- | --- |
| 1 | **Inception Phase** |  | 2017-02-17 17:00 A |  | 98% → 100% | 2.38d → none |  |  |
| 7 | Plan van aanpak |  |  |  |  |  | 5 → 6 |  |
| 9 | Functioneel Ontwerp inclusief taakverdeeling | 2017-02-13 08:20 A → 2017-02-17 08:00 A (+4d) | 2017-02-13 08:40 A → 2017-02-17 08:40 A (+4d) |  |  |  |  | was named Functioneel ontwerp inclusief taakverdeeling |
| 16 | **Activiteitendiagrammen** | 2017-02-17 08:20 A | 2017-02-17 08:40 A |  | 0% → 100% | 2.79d → none |  |  |
| 17 | Selecteer operaties en/of use-cases en plaats een titel boven het te maken diagram | 2017-02-17 08:20 A | 2017-02-17 08:40 A |  | 0% → 100% | 2.79d → none |  |  |
| 18 | Vind de activiteiten en de bijbehorende flow of control | 2017-02-17 08:20 A | 2017-02-17 08:40 A |  | 0% → 100% | 2.79d → none |  |  |
| 19 | Bepaal per activiteit welk object verantwoordelijk is | 2017-02-17 08:20 A | 2017-02-17 08:30 A |  | 0% → 100% | 2.81d → none |  |  |
| 20 | End Inception Phase | 2017-02-24 08:00 A | 2017-02-24 08:00 A |  | 0% → 100% | 0d → none | none → 1 |  |
| 21 | **Elaboration Phase** | 2017-02-24 08:20 → 2017-02-20 08:00 A (-4d) | 2017-02-28 09:00 → 2017-02-24 08:50 A (-4d) | 1d? → 1.44d | 0% → 100% | 0d → none |  |  |
| 22 | Technisch Ontwerp inclusief taakverdeling | 2017-02-24 08:20 A | 2017-02-24 08:30 → 2017-02-24 08:50 A | 10min → 30min | 0% → 100% | 0.98d → none | none → 20 |  |
| 23 | Modeldictionary | 2017-02-24 08:20 → 2017-02-20 08:00 A (-4d) | 2017-02-24 08:35 → 2017-02-20 08:40 A (-4d) | 15min → 20min | 0% → 100% | 0.97d → none | none → 22 | resources Steven Logghe → Patrick van Batenburg |
| 24 | Klassendiagram | 2017-02-24 08:20 → 2017-02-20 08:00 A (-4d) | 2017-02-24 08:35 → 2017-02-20 08:50 A (-4d) | 15min → 30min | 0% → 100% | 0.97d → none | none → 23 |  |
| 25 | Ontwerp datadictionary | 2017-02-24 08:20 → 2017-02-21 08:00 A (-3d) | 2017-02-24 08:35 → 2017-02-21 08:35 A (-3d) |  | 0% → 100% | 0.97d → none | none → 24 |  |
| 26 | Sequentiediagrammen | 2017-02-24 08:20 → 2017-02-21 08:00 A (-3d) | 2017-02-24 08:40 → 2017-02-21 08:40 A (-3d) |  | 0% → 100% | 0.96d → none | none → 25 | resources Patrick van Batenburg → Steven Logghe |
| 27 | Overzicht taakverdeling Inrichten van de ontwikkelomgeving | 2017-02-24 08:20 → 2017-02-20 08:00 A (-4d) | 2017-02-24 08:30 → 2017-02-20 08:30 A (-4d) |  | 0% → 100% | 0.98d → none | none → 26 |  |
| 31 | Materialenlijst: Hard- en software van de ontwikkelomgeving | 2017-02-24 08:20 → 2017-02-20 08:00 A (-4d) | 2017-02-24 08:30 → 2017-02-20 09:50 A (-4d) | 10min → 90min | 0% → 100% | 0.98d → none | none → 28 |  |
| 32 | Back-up procedure | 2017-02-24 08:20 → 2017-02-22 08:00 A (-2d) | 2017-02-28 09:00 → 2017-02-22 09:20 A (-6d) | 1d? → 60min | 0% → 100% | 0d → none | none → 31 | resources Patrick van Batenburg → Steven Logghe |
| 33 | Verslag over de installatie, configuratie en testen van de testomgeving | 2017-02-24 08:20 → 2017-02-22 08:00 A (-2d) | 2017-02-28 09:00 → 2017-02-22 08:50 A (-6d) | 1d? → 30min | 0% → 100% | 0d → none | none → 32 |  |
| 34 | End Elaboration Phase | 2017-02-13 08:00 → 2017-02-24 08:50 (+11d) | 2017-02-13 08:00 → 2017-02-24 08:50 (+11d) |  |  | 4.21d → 0d | none → 21 | constraint none → start no earlier than 2017-02-24 08:00 |
| 35 | **Construction Phase** | 2017-02-13 08:20 → 2017-02-24 08:50 (+11d) | 2017-02-16 09:00 → 2017-03-20 10:30 (+32d) | 1d? → 6.12d? |  | 3.21d → 0d | none → 34 |  |
| 36 | Organisatieonderzoek over reeds gebruikte databases/te gebruiken database | 2017-02-13 08:20 → 2017-02-24 08:50 (+11d) | 2017-02-16 09:00 → 2017-03-01 09:30 (+13d) |  |  | 3.21d → 0d | none → 34 |  |
| 37 | Genormaliseerd databaseontwerp | 2017-02-13 08:20 → 2017-03-01 09:30 (+16d) | 2017-02-13 08:40 → 2017-03-01 09:50 (+16d) |  |  | 4.17d → 0d | none → 36 |  |
| 38 | Definitieve datadictionary | 2017-02-13 08:20 → 2017-03-01 09:50 (+16d) | 2017-02-13 08:40 → 2017-03-01 10:30 (+16d) |  |  | 4.17d → 0d | none → 37 |  |
| 39 | De database (gebouwd) | 2017-02-13 08:20 → 2017-03-01 10:30 (+16d) | 2017-02-13 08:30 → 2017-03-01 10:40 (+16d) |  |  | 4.19d → 0d | none → 38 |  |
| 40 | **Werkende solution/webapplicatie (v1.0.0). Alle functionaliteit is gerealiseerd.** | 2017-02-13 08:20 → 2017-03-01 10:40 (+16d) | 2017-02-16 09:00 → 2017-03-03 11:20 (+15d) |  |  | 3.21d → 0d | none → 39 |  |
| 41 | Registratiesysteem | 2017-02-13 08:20 → 2017-03-01 10:40 (+16d) | 2017-02-16 09:00 → 2017-03-03 11:20 (+15d) |  |  | 3.21d → 0d | none → 39 |  |
| 42 | Inlogsysteem | 2017-02-13 08:20 → 2017-03-01 10:40 (+16d) | 2017-02-16 09:00 → 2017-03-03 11:20 (+15d) |  |  | 3.21d → 0d | none → 39 |  |
| 43 | Create taak | 2017-02-13 08:20 → 2017-03-01 10:40 (+16d) | 2017-02-16 09:00 → 2017-03-03 11:20 (+15d) |  |  | 3.21d → 0d | none → 39 |  |
| 44 | Read taak | 2017-02-13 08:20 → 2017-03-01 10:40 (+16d) | 2017-02-16 09:00 → 2017-03-03 11:20 (+15d) |  |  | 3.21d → 0d | none → 39 |  |
| 45 | Update taak | 2017-02-13 08:20 → 2017-03-01 10:40 (+16d) | 2017-02-16 09:00 → 2017-03-03 11:20 (+15d) |  |  | 3.21d → 0d | none → 39 |  |
| 46 | Delete taak | 2017-02-13 08:20 → 2017-03-01 10:40 (+16d) | 2017-02-16 09:00 → 2017-03-03 11:20 (+15d) |  |  | 3.21d → 0d | none → 39 |  |
| 47 | Dataset (Lijsten van ingevoerde en dus geteste data) | 2017-02-13 08:20 → 2017-03-03 11:20 (+18d) | 2017-02-13 08:30 → 2017-03-03 11:30 (+18d) |  |  | 4.19d → 0d | none → 40 |  |
| 48 | Technische test is gemaakt. | 2017-02-13 08:20 → 2017-03-03 11:30 (+18d) | 2017-02-16 09:00 → 2017-03-08 12:10 (+20d) |  |  | 3.21d → 0d | none → 47 |  |
| 49 | Technische test is uitgevoerd | 2017-02-13 08:20 → 2017-03-08 12:10 (+23d) | 2017-02-16 09:00 → 2017-03-13 08:50 (+25d) |  |  | 3.21d → 0d | none → 48 |  |
| 50 | Functionele test is gemaakt. | 2017-02-13 08:20 → 2017-03-13 08:50 (+28d) | 2017-02-16 09:00 → 2017-03-16 09:30 (+28d) |  |  | 3.21d → 0d | none → 49 |  |
| 51 | Functionele test is uitgevoerd. | 2017-02-13 08:20 → 2017-03-16 09:30 (+31d) | 2017-02-16 09:00 → 2017-03-20 10:30 (+32d) |  |  | 3.21d → 0d | none → 50 |  |
| 52 | End Construction Phase | 2017-02-13 08:00 → 2017-03-20 10:30 (+35d) | 2017-02-13 08:00 → 2017-03-20 10:30 (+35d) |  |  | 4.21d → 0d | none → 35 |  |
| 53 | **Transition Phase** | 2017-02-13 08:20 → 2017-03-20 10:30 (+35d) | 2017-02-16 09:00 → 2017-04-12 10:50 (+55d) | 1d → 6d |  | 3.21d → 0d | none → 52 |  |
| 54 | Acceptatietest is uitgevoerd bij (gebruiker van) de opdrachtgever. | 2017-02-13 08:20 → 2017-03-20 10:30 (+35d) | 2017-02-16 09:00 → 2017-03-23 11:10 (+35d) |  |  | 3.21d → 0d | none → 52 |  |
| 55 | Gebruikershandleiding | 2017-02-13 08:20 → 2017-03-23 11:10 (+38d) | 2017-02-16 09:00 → 2017-03-27 11:50 (+39d) |  |  | 3.21d → 0d | none → 54 |  |
| 56 | Projectrapport | 2017-02-13 08:20 → 2017-03-27 11:50 (+42d) | 2017-02-16 09:00 → 2017-03-31 08:30 (+43d) |  |  | 3.21d → 0d | none → 55 |  |
| 57 | Teamrapport (= individuele reflectie) | 2017-02-13 08:20 → 2017-03-31 08:30 (+46d) | 2017-02-16 09:00 → 2017-04-05 09:10 (+48d) |  |  | 3.21d → 0d | none → 56 |  |
| 58 | Presentatie | 2017-02-13 08:20 → 2017-04-05 09:10 (+51d) | 2017-02-16 09:00 → 2017-04-07 09:50 (+50d) |  |  | 3.21d → 0d | none → 57 |  |
| 59 | Logboek Tijdregistratie | 2017-02-13 08:20 → 2017-04-07 09:50 (+53d) | 2017-02-16 09:00 → 2017-04-12 10:50 (+55d) |  |  | 3.21d → 0d | none → 58 |  |
| 60 | End Transition Phase | 2017-02-13 08:20 → 2017-04-12 10:50 (+58d) | 2017-02-16 09:00 → 2017-04-14 11:30 (+57d) |  |  | 3.21d → 0d | none → 59 |  |

## Version 3 (saved 2017-02-24, file Planning_week2.mpp)

Note of the change: planning aangepast met vakantie

Last finish 2017-04-14 → 2017-03-31 (-14d). Complete tasks 27 → 31.

Added:

| ID | Task | Duration | Start | Finish | Resources |
| --- | --- | --- | --- | --- | --- |
| 41 | Database handler | 60min | 2017-02-24 10:50 | 2017-02-24 11:50 | Patrick van Batenburg |

Changed:

| ID | Task | Start | Finish | Duration | Complete | Total float | Other |
| --- | --- | --- | --- | --- | --- | --- | --- |
| 5 | Prototype van shermen gebaseerd op interview |  | 2017-02-16 08:30 A → 2017-02-16 09:00 A | 30min → 60min |  |  |  |
| 6 | Prototype toelichting volgordelijkheid |  | 2017-02-16 08:50 A → 2017-02-16 09:10 A | 20min → 40min |  |  |  |
| 9 | Functioneel Ontwerp inclusief taakverdeeling |  | 2017-02-17 08:40 A → 2017-02-17 09:00 A | 20min → 40min |  |  |  |
| 21 | **Elaboration Phase** |  | 2017-02-24 08:50 A → 2017-02-23 12:20 A (-1d) | 1.44d → 1.38d |  |  |  |
| 22 | Technisch Ontwerp inclusief taakverdeling | 2017-02-24 08:20 A → 2017-02-23 08:00 A (-1d) | 2017-02-24 08:50 A → 2017-02-23 09:10 A (-1d) | 30min → 50min |  |  |  |
| 23 | Modeldictionary | 2017-02-20 08:00 A → 2017-02-22 08:00 A (+2d) | 2017-02-20 08:40 A → 2017-02-22 12:20 A (+2d) | 20min → 220min |  |  | constraint none → finish no earlier than 2017-02-22 17:00 |
| 26 | Sequentiediagrammen | 2017-02-21 08:00 A → 2017-02-23 08:00 A (+2d) | 2017-02-21 08:40 A → 2017-02-23 12:20 A (+2d) | 20min → 220min |  |  | constraint none → finish no earlier than 2017-02-23 17:00 |
| 34 | End Elaboration Phase | 2017-02-24 08:50 → 2017-02-23 08:00 A (-1d) | 2017-02-24 08:50 → 2017-02-23 08:00 A (-1d) |  | 0% → 100% | 0d → none | constraint start no earlier than 2017-02-24 08:00 → none |
| 35 | **Construction Phase** | 2017-02-24 08:50 → 2017-02-23 08:00 A (-1d) | 2017-03-20 10:30 → 2017-03-06 09:20 (-14d) | 6.12d? → 1.04d | 0% → 23% |  |  |
| 36 | Organisatieonderzoek over reeds gebruikte databases/te gebruiken database | 2017-02-24 08:50 → 2017-02-23 08:00 A (-1d) | 2017-03-01 09:30 → 2017-02-23 09:20 A (-6d) | 1d? → 60min | 0% → 100% | 0d → none |  |
| 37 | Genormaliseerd databaseontwerp | 2017-03-01 09:30 → 2017-02-24 09:10 A (-5d) | 2017-03-01 09:50 → 2017-02-24 09:50 A (-5d) | 20min → 40min | 0% → 100% | 0d → none | resources Patrick van Batenburg → Steven Logghe |
| 38 | Definitieve datadictionary | 2017-03-01 09:50 → 2017-02-24 09:50 A (-5d) | 2017-03-01 10:30 → 2017-02-24 10:40 A (-5d) | 20min → 30min | 0% → 100% | 0d → none |  |
| 39 | De database (gebouwd) | 2017-03-01 10:30 → 2017-02-24 10:40 (-5d) | 2017-03-01 10:40 → 2017-02-24 10:50 (-5d) |  |  |  |  |
| 40 | **Werkende solution/webapplicatie (v1.0.0). Alle functionaliteit is gerealiseerd.** | 2017-03-01 10:40 → 2017-02-24 10:50 (-5d) | 2017-03-03 11:20 → 2017-02-24 11:50 (-7d) | 1d? → 0.12d |  |  |  |
| 42 | Registratiesysteem | 2017-03-01 10:40 → 2017-02-24 10:50 (-5d) | 2017-03-03 11:20 → 2017-02-24 11:50 (-7d) | 1d? → 60min |  |  | resources none → Steven Logghe |
| 43 | Inlogsysteem | 2017-03-01 10:40 → 2017-02-24 10:50 (-5d) | 2017-03-03 11:20 → 2017-02-24 11:50 (-7d) | 1d? → 60min |  |  | resources none → Patrick van Batenburg |
| 44 | Create taak | 2017-03-01 10:40 → 2017-02-24 10:50 (-5d) | 2017-03-03 11:20 → 2017-02-24 11:30 (-7d) | 1d? → 40min |  | 0d → 0.04d | resources none → Patrick van Batenburg; Steven Logghe |
| 45 | Read taak | 2017-03-01 10:40 → 2017-02-24 10:50 (-5d) | 2017-03-03 11:20 → 2017-02-24 11:30 (-7d) | 1d? → 40min |  | 0d → 0.04d | resources none → Steven Logghe |
| 46 | Update taak | 2017-03-01 10:40 → 2017-02-24 10:50 (-5d) | 2017-03-03 11:20 → 2017-02-24 11:30 (-7d) | 1d? → 40min |  | 0d → 0.04d | resources none → Patrick van Batenburg |
| 47 | Delete taak | 2017-03-01 10:40 → 2017-02-24 10:50 (-5d) | 2017-03-03 11:20 → 2017-02-24 11:30 (-7d) | 1d? → 40min |  | 0d → 0.04d | resources none → Steven Logghe |
| 48 | Dataset (Lijsten van ingevoerde en dus geteste data) | 2017-03-03 11:20 → 2017-02-24 11:50 (-7d) | 2017-03-03 11:30 → 2017-02-24 12:10 (-7d) | 10min → 20min |  |  |  |
| 49 | Technische test is gemaakt. | 2017-03-03 11:30 → 2017-02-24 12:10 (-7d) | 2017-03-08 12:10 → 2017-03-06 08:25 (-2d) | 1d → 15min |  |  |  |
| 50 | Technische test is uitgevoerd | 2017-03-08 12:10 → 2017-03-06 08:25 (-2d) | 2017-03-13 08:50 → 2017-03-06 08:45 (-7d) | 1d → 20min |  |  |  |
| 51 | Functionele test is gemaakt. | 2017-03-13 08:50 → 2017-03-06 08:45 (-7d) | 2017-03-16 09:30 → 2017-03-06 09:00 (-10d) | 1d → 15min |  |  |  |
| 52 | Functionele test is uitgevoerd. | 2017-03-16 09:30 → 2017-03-06 09:00 (-10d) | 2017-03-20 10:30 → 2017-03-06 09:20 (-14d) | 1d → 20min |  |  |  |
| 53 | End Construction Phase | 2017-03-20 10:30 → 2017-03-06 09:20 (-14d) | 2017-03-20 10:30 → 2017-03-06 09:20 (-14d) |  |  |  |  |
| 54 | **Transition Phase** | 2017-03-20 10:30 → 2017-03-06 09:20 (-14d) | 2017-04-12 10:50 → 2017-03-29 09:40 (-14d) |  |  |  |  |
| 55 | Acceptatietest is uitgevoerd bij (gebruiker van) de opdrachtgever. | 2017-03-20 10:30 → 2017-03-06 09:20 (-14d) | 2017-03-23 11:10 → 2017-03-09 10:00 (-14d) |  |  |  |  |
| 56 | Gebruikershandleiding | 2017-03-23 11:10 → 2017-03-09 10:20 (-14d) | 2017-03-27 11:50 → 2017-03-13 11:00 (-14d) |  |  |  |  |
| 57 | Projectrapport | 2017-03-27 11:50 → 2017-03-13 11:00 (-14d) | 2017-03-31 08:30 → 2017-03-16 11:40 (-15d) |  |  |  |  |
| 58 | Teamrapport (= individuele reflectie) | 2017-03-31 08:30 → 2017-03-16 11:40 (-15d) | 2017-04-05 09:10 → 2017-03-20 12:20 (-16d) |  |  |  |  |
| 59 | Presentatie | 2017-04-05 09:10 → 2017-03-22 08:20 (-14d) | 2017-04-07 09:50 → 2017-03-24 09:00 (-14d) |  |  |  |  |
| 60 | Logboek Tijdregistratie | 2017-04-07 09:50 → 2017-03-24 09:00 (-14d) | 2017-04-12 10:50 → 2017-03-29 09:40 (-14d) |  |  |  |  |
| 61 | End Transition Phase | 2017-04-12 10:50 → 2017-03-29 09:40 (-14d) | 2017-04-14 11:30 → 2017-03-31 10:40 (-14d) |  |  |  |  |
